# 数据基座建设

Schedule from a web Gantt chart, 2024-07-16 to 2024-08-30.
Saturdays and Sundays are off

## Schedule

| ID | WBS | Task | Duration | Start | Finish | Complete |
| --- | --- | --- | --- | --- | --- | --- |
| 2 | 1 | **医共体驾驶舱** | 10d | 2024-07-25 | 2024-08-07 |  |
| 3 | 1.1 | 茂名市健康平台统计指标梳理 | 3d | 2024-07-25 | 2024-07-29 |  |
| 4 | 1.2 | 医共体运行指标计算 | 3d | 2024-07-29 | 2024-07-31 |  |
| 5 | 1.3 | 医共体驾驶舱系统交互稿设计 | 3d | 2024-07-25 | 2024-07-29 |  |
| 6 | 1.4 | 医共体驾驶舱系统功能 | 8d | 2024-07-29 | 2024-08-07 |  |
| 7 | 2 | **慢病档案建立** | 34d | 2024-07-16 | 2024-08-30 | 2% |
| 8 | 2.1 | 省基卫数据清洗 | 4d | 2024-07-16 | 2024-07-19 | 30% |
| 9 | 2.2 | 省基卫数据入库 | 7d | 2024-07-18 | 2024-07-26 |  |
| 10 | 2.3 | 病案系统数据清洗 | 7d | 2024-07-22 | 2024-07-30 |  |
| 11 | 2.4 | 病案系统数据入库 | 8d | 2024-07-29 | 2024-08-07 |  |
| 12 | 2.5 | 基层医生档案录入 | 7d | 2024-08-01 | 2024-08-09 |  |
| 13 | 2.6 | i信医慢病管理数据接入 | 22d | 2024-08-01 | 2024-08-30 |  |
| 14 | 3 | **慢病档案服务** | 31d | 2024-07-19 | 2024-08-30 |  |
| 15 | 3.1 | 主索引系统功能开发 | 9d | 2024-07-19 | 2024-07-31 |  |
| 16 | 3.2 | 主索引系统功能测试 | 7d | 2024-07-29 | 2024-08-06 |  |
| 17 | 3.3 | 医务人员用户管理功能开发 | 8d | 2024-07-31 | 2024-08-09 |  |
| 18 | 3.4 | 医务人员用户管理功能测试 | 5d | 2024-08-12 | 2024-08-16 |  |
| 19 | 3.5 | 与i信医对接慢病档案服务 | 16d | 2024-08-05 | 2024-08-26 |  |
| 20 | 3.6 | 与i信医对接慢病管理服务 | 9d | 2024-08-19 | 2024-08-29 |  |
| 21 | 3.7 | 测试i信医对接 | 9d | 2024-08-20 | 2024-08-30 |  |

Notes:
- 13: 需等候i信医相应功能完成和协调
- 20: 需等候i信医相应功能完成和协调
- 21: 需等候i信医相应功能完成和协调
